# Cronograma

Schedule from MS Project, 2021-09-01 to 2022-01-28, costs in R$, A marks actual dates.

## Calendars

- Padrão: Mon-Fri 09:00-12:00, 13:00-18:00; Sat-Sun off. Exceptions (off unless hours are given): 2021-11-01 to 2021-11-02 (Feriado), 2021-11-15 (Feriado).

## Resources

| Resource | Rate |
| --- | --- |
| ANDERSON ALVES | 60 |
| LEANDRO LEÃO | 60 |
| TENÓRIO DE LIMA | 60 |
| SÍLVIO SOARES | 60 |
| DOMINGOS GOMES | 60 |
| MARIA DAS FLORES | 60 |
| Lauquen |  |
| Produção | 20 |
| BARBARA SILVA | 60 |
| 1 |  |
| 65 |  |
| Griffus | 30 |

## Schedule

| ID | WBS | Task | Type | Duration | Start | Finish | Predecessors | Complete | Baseline start | Baseline finish | Baseline duration | Baseline 1 start | Baseline 1 finish | Constraint | Resources | Work | Actual work | Cost | Actual cost |
| --- | --- | --- | --- | --- | --- | --- | --- | --- | --- | --- | --- | --- | --- | --- | --- | --- | --- | --- | --- |
| 1 | 1 | Início do Projeto | milestone | 0d | 2021-09-01 A | 2021-09-01 A |  | 100% | 2021-09-01 | 2021-09-01 | 0d | 2021-09-01 | 2021-09-01 | start no earlier than 2021-09-01 |  |  |  |  |  |
| 2 | 2 | **RADAR 001 - EXC** |  | 102.5d | 2021-09-03 A | 2022-01-28 A |  | 100% | 2021-09-01 | 2021-12-23 | 78.05d | 2021-09-03 | 2022-01-28 |  |  | 960.32h | 960.32h | 55,459.2 | 55,459.2 |
| 3 | 2.1 | **Concepção** |  | 20d | 2021-09-03 A | 2021-09-30 A |  | 100% | 2021-09-01 | 2021-09-21 | 15d | 2021-09-03 | 2021-09-30 |  |  | 63.2h | 63.2h | 3,792 | 3,792 |
| 4 | 2.1.1 | **Desenvolver plano de gerenciamento do projeto** |  | 8d | 2021-09-06 A | 2021-09-15 A |  | 100% | 2021-09-01 | 2021-09-10 | 8d | 2021-09-06 | 2021-09-15 |  |  | 32h | 32h | 1,920 | 1,920 |
| 5 | 2.1.1.1 | Plano de Gerenciamento do Projeto - Ágil |  | 3d | 2021-09-13 A | 2021-09-15 A |  | 100% | 2021-09-01 | 2021-09-03 | 3d | 2021-09-13 | 2021-09-15 | start no earlier than 2021-09-01 | DOMINGOS GOMES [50%] | 12h | 12h | 720 | 720 |
| 6 | 2.1.1.2 | Matriz de Gerenciamento de Riscos |  | 2d | 2021-09-09 A | 2021-09-10 A | 5 | 100% | 2021-09-06 | 2021-09-07 | 2d | 2021-09-09 | 2021-09-10 |  | DOMINGOS GOMES [50%] | 8h | 8h | 480 | 480 |
| 7 | 2.1.1.3 | Cronograma |  | 3d | 2021-09-06 A | 2021-09-08 A | 6 | 100% | 2021-09-08 | 2021-09-10 | 3d | 2021-09-06 | 2021-09-08 |  | DOMINGOS GOMES [50%] | 12h | 12h | 720 | 720 |
| 8 | 2.1.2 | **Desenvolver Requisitos de cliente** |  | 3d | 2021-09-03 A | 2021-09-07 A |  | 100% | 2021-09-13 | 2021-09-14 | 2d | 2021-09-03 | 2021-09-07 |  |  | 8h | 8h | 480 | 480 |
| 9 | 2.1.2.1 | Rastreabilidade entre necessidades, restrições e requisitos de cliente |  | 1d | 2021-09-03 A | 2021-09-03 A | 7 | 100% | 2021-09-13 | 2021-09-13 | 1d | 2021-09-03 | 2021-09-03 |  | DOMINGOS GOMES [50%] | 4h | 4h | 240 | 240 |
| 10 | 2.1.2.2 | Requisitos de Cliente |  | 1d | 2021-09-07 A | 2021-09-07 A | 9 | 100% | 2021-09-14 | 2021-09-14 | 1d | 2021-09-07 | 2021-09-07 |  | DOMINGOS GOMES [50%] | 4h | 4h | 240 | 240 |
| 11 | 2.1.3 | **Desenvolver Requisitos de Sistema** |  | 2d | 2021-09-24 A | 2021-09-27 A |  | 100% | 2021-09-15 | 2021-09-16 | 2d | 2021-09-24 | 2021-09-27 |  |  | 8h | 8h | 480 | 480 |
| 12 | 2.1.3.1 | Especificação de Requisitos de Sistema |  | 2d | 2021-09-24 A | 2021-09-27 A | 10 | 100% | 2021-09-15 | 2021-09-16 | 2d | 2021-09-24 | 2021-09-27 |  | DOMINGOS GOMES [50%] | 8h | 8h | 480 | 480 |
| 13 | 2.1.4 | **Realizar Baseline SSR** |  | 3d | 2021-09-28 A | 2021-09-30 A |  | 100% | 2021-09-17 | 2021-09-21 | 3d | 2021-09-28 | 2021-09-30 |  |  | 15.2h | 15.2h | 912 | 912 |
| 14 | 2.1.4.1 | Baseline SRR |  | 1d | 2021-09-28 A | 2021-09-28 A | 12 | 100% | 2021-09-17 | 2021-09-17 | 1d | 2021-09-28 | 2021-09-28 |  | DOMINGOS GOMES [45%] | 3.6h | 3.6h | 216 | 216 |
| 15 | 2.1.4.2 | Relatório de Baseline |  | 1d | 2021-09-29 A | 2021-09-29 A | 14 | 100% | 2021-09-20 | 2021-09-20 | 1d | 2021-09-29 | 2021-09-29 |  | DOMINGOS GOMES [45%] | 3.6h | 3.6h | 216 | 216 |
| 16 | 2.1.4.3 | Auditar Baseline |  | 1d | 2021-09-30 A | 2021-09-30 A | 15 | 100% | 2021-09-21 | 2021-09-21 | 1d | 2021-09-30 | 2021-09-30 |  | MARIA DAS FLORES | 8h | 8h | 480 | 480 |
| 17 | 2.2 | **Projeto** |  | 23d | 2021-12-21 A | 2022-01-20 A |  | 100% | 2021-09-22 | 2021-09-30 | 7d | 2021-12-21 | 2021-12-29 |  |  | 56h | 56h | 3,360 | 3,360 |
| 18 | 2.2.1 | Desenvolver Arquitetura |  | 4d | 2021-12-21 A | 2021-12-24 A | 16 | 100% | 2021-09-22 | 2021-09-27 | 4d | 2021-12-21 | 2021-12-24 | start no earlier than 2021-12-21 | BARBARA SILVA | 32h | 32h | 1,920 | 1,920 |
| 19 | 2.2.2 | Desenvolver interfaces |  | 3d | 2022-01-18 A | 2022-01-20 A | 18 | 100% | 2021-09-28 | 2021-09-30 | 3d | 2021-12-27 | 2021-12-29 |  | BARBARA SILVA | 24h | 24h | 1,440 | 1,440 |
| 20 | 2.3 | **Desenvolvimento** |  | 100d | 2021-09-06 A | 2022-01-26 A |  | 100% | 2021-09-06 | 2021-12-21 | 73.7d | 2021-09-06 | 2022-01-25 |  |  | 789.6h | 789.6h | 45,216 | 45,216 |
| 21 | 2.3.1 | **Preparar Verificação & Validação do sistema** |  | 2d | 2022-01-10 A | 2022-01-11 A |  | 100% | 2021-09-06 | 2021-09-08 | 3d | 2021-12-27 | 2021-12-29 |  |  | 24h | 24h | 1,440 | 1,440 |
| 22 | 2.3.1.1 | Matriz de V&V atualizada com os procedimentos |  | 1d | 2022-01-10 A | 2022-01-10 A | 18 | 100% | 2021-09-06 | 2021-09-06 | 1d | 2021-12-27 | 2021-12-27 |  | ANDERSON ALVES | 8h | 8h | 480 | 480 |
| 23 | 2.3.1.2 | Procedimento de verificação |  | 2d | 2022-01-10 A | 2022-01-11 A | 22 | 100% | 2021-09-07 | 2021-09-08 | 2d | 2021-12-28 | 2021-12-29 |  | ANDERSON ALVES | 16h | 16h | 960 | 960 |
| 24 | 2.3.2 | **Sistema** |  | 98d | 2021-09-06 A | 2022-01-24 A |  | 100% | 2021-09-06 | 2021-12-17 | 71.7d | 2021-09-06 | 2022-01-21 |  |  | 758.4h | 758.4h | 43,344 | 43,344 |
| 25 | 2.3.2.1 | **Hardware** |  | 98d | 2021-09-06 A | 2022-01-24 A |  | 100% | 2021-09-06 | 2021-12-17 | 71.7d | 2021-09-06 | 2022-01-21 |  |  | 758.4h | 758.4h | 43,344 | 43,344 |
| 26 | 2.3.2.1.1 | **Arquitetura de sistema (atualizado com memorial de cálculo)** |  | 40d | 2021-09-06 A | 2021-10-29 A |  | 100% | 2021-09-06 | 2021-10-29 | 40d | 2021-09-06 | 2021-10-29 |  |  | 520h | 520h | 31,200 | 31,200 |
| 27 | 2.3.2.1.1.1 | **Projeto Cadeia de RF** |  | 40d | 2021-09-06 A | 2021-10-29 A |  | 100% | 2021-09-06 | 2021-10-29 | 40d | 2021-09-06 | 2021-10-29 |  |  | 520h | 520h | 31,200 | 31,200 |
| 28 | 2.3.2.1.1.1.1 | Serviço de Terceiro |  | 40d | 2021-09-06 A | 2021-10-29 A |  | 100% | 2021-09-06 | 2021-10-29 | 40d | 2021-09-06 | 2021-10-29 | finish no earlier than 2021-10-29 | SÍLVIO SOARES [30%] | 264h | 264h | 15,840 | 15,840 |

| ID | WBS | Task | Type | Duration | Start | Finish | Predecessors | Complete | Baseline start | Baseline finish | Baseline duration | Baseline 1 start | Baseline 1 finish | Constraint | Resources | Work | Actual work | Cost | Actual cost |
| --- | --- | --- | --- | --- | --- | --- | --- | --- | --- | --- | --- | --- | --- | --- | --- | --- | --- | --- | --- |
| 29 | 2.3.2.1.1.1.2 | **Isoladores** |  | 1d | 2021-09-13 A | 2021-09-13 A |  | 100% | 2021-09-13 | 2021-09-13 | 1d | 2021-09-13 | 2021-09-13 |  |  | 8h | 8h | 480 | 480 |
| 30 | 2.3.2.1.1.1.2.1 | Especificar componentes |  | 1d | 2021-09-13 A | 2021-09-13 A |  | 100% | 2021-09-13 | 2021-09-13 | 1d | 2021-09-13 | 2021-09-13 | start no earlier than 2021-09-13 | ANDERSON ALVES | 8h | 8h | 480 | 480 |
| 31 | 2.3.2.1.1.1.3 | **Chave** |  | 1d | 2021-09-14 A | 2021-09-14 A |  | 100% | 2021-09-14 | 2021-09-14 | 1d | 2021-09-14 | 2021-09-14 |  |  | 8h | 8h | 480 | 480 |
| 32 | 2.3.2.1.1.1.3.1 | Projetar chave |  | 1d | 2021-09-14 A | 2021-09-14 A | 30 | 100% | 2021-09-14 | 2021-09-14 | 1d | 2021-09-14 | 2021-09-14 |  | ANDERSON ALVES | 8h | 8h | 480 | 480 |
| 33 | 2.3.2.1.1.1.4 | **Driver** |  | 14d | 2021-09-15 A | 2021-10-04 A |  | 100% | 2021-09-15 | 2021-10-04 | 14d | 2021-09-15 | 2021-10-04 |  |  | 112h | 112h | 6,720 | 6,720 |
| 34 | 2.3.2.1.1.1.4.1 | Especificar componentes |  | 1d | 2021-09-15 A | 2021-09-15 A | 32 | 100% | 2021-09-15 | 2021-09-15 | 1d | 2021-09-15 | 2021-09-15 |  | ANDERSON ALVES | 8h | 8h | 480 | 480 |
| 35 | 2.3.2.1.1.1.4.2 | **Montar projeto no simulador** |  | 12d | 2021-09-16 A | 2021-10-01 A |  | 100% | 2021-09-16 | 2021-10-01 | 12d | 2021-09-16 | 2021-10-01 |  |  | 96h | 96h | 5,760 | 5,760 |
| 36 | 2.3.2.1.1.1.4.2.1 | Elétrico |  | 10d | 2021-09-16 A | 2021-09-29 A | 34 | 100% | 2021-09-16 | 2021-09-29 | 10d | 2021-09-16 | 2021-09-29 |  | ANDERSON ALVES | 80h | 80h | 4,800 | 4,800 |
| 37 | 2.3.2.1.1.1.4.2.2 | Magnético |  | 2d | 2021-09-30 A | 2021-10-01 A | 36 | 100% | 2021-09-30 | 2021-10-01 | 2d | 2021-09-30 | 2021-10-01 |  | ANDERSON ALVES | 16h | 16h | 960 | 960 |
| 38 | 2.3.2.1.1.1.4.3 | Validar projeto |  | 1d | 2021-10-04 A | 2021-10-04 A | 37 | 100% | 2021-10-04 | 2021-10-04 | 1d | 2021-10-04 | 2021-10-04 |  | ANDERSON ALVES | 8h | 8h | 480 | 480 |
| 39 | 2.3.2.1.1.1.5 | **PA - 250w** |  | 11d | 2021-10-05 A | 2021-10-19 A |  | 100% | 2021-10-05 | 2021-10-19 | 11d | 2021-10-05 | 2021-10-19 |  |  | 88h | 88h | 5,280 | 5,280 |
| 40 | 2.3.2.1.1.1.5.1 | **Montar projeto no simulador** |  | 11d | 2021-10-05 A | 2021-10-19 A |  | 100% | 2021-10-05 | 2021-10-19 | 11d | 2021-10-05 | 2021-10-19 |  |  | 88h | 88h | 5,280 | 5,280 |
| 41 | 2.3.2.1.1.1.5.1.1 | Elétrico |  | 8d | 2021-10-05 A | 2021-10-14 A | 38 | 100% | 2021-10-05 | 2021-10-14 | 8d | 2021-10-05 | 2021-10-14 |  | ANDERSON ALVES | 64h | 64h | 3,840 | 3,840 |
| 42 | 2.3.2.1.1.1.5.1.2 | Magnético |  | 2d | 2021-10-15 A | 2021-10-18 A | 41 | 100% | 2021-10-15 | 2021-10-18 | 2d | 2021-10-15 | 2021-10-18 |  | ANDERSON ALVES | 16h | 16h | 960 | 960 |
| 43 | 2.3.2.1.1.1.5.1.3 | Validar projeto |  | 1d | 2021-10-19 A | 2021-10-19 A | 42 | 100% | 2021-10-19 | 2021-10-19 | 1d | 2021-10-19 | 2021-10-19 |  | ANDERSON ALVES | 8h | 8h | 480 | 480 |
| 44 | 2.3.2.1.1.1.6 | **Integrar os 2 estagios de RF** |  | 4d | 2021-10-20 A | 2021-10-25 A |  | 100% | 2021-10-20 | 2021-10-25 | 4d | 2021-10-20 | 2021-10-25 |  |  | 32h | 32h | 1,920 | 1,920 |
| 45 | 2.3.2.1.1.1.6.1 | Integrar os 2 estagios de RF |  | 4d | 2021-10-20 A | 2021-10-25 A | 38, 43 | 100% | 2021-10-20 | 2021-10-25 | 4d | 2021-10-20 | 2021-10-25 |  | ANDERSON ALVES | 32h | 32h | 1,920 | 1,920 |
| 46 | 2.3.2.1.1.1.7 | Comprar componentes |  | 1d | 2021-10-27 A | 2021-10-28 A | 50 | 100% | 2021-10-27 | 2021-10-28 | 1d | 2021-10-27 | 2021-10-28 |  | LEANDRO LEÃO | 8h | 8h | 480 | 480 |
| 47 | 2.3.2.1.2 | Iniciar Esquemático | milestone | 0d | 2021-10-25 A | 2021-10-25 A | 45 | 100% | 2021-10-25 | 2021-10-25 | 0d | 2021-10-25 | 2021-10-25 |  |  |  |  |  |  |
| 48 | 2.3.2.1.3 | **Desenvolver Esquemático** |  | 8.4d | 2021-10-20 A | 2021-11-03 A |  | 100% | 2021-10-20 | 2021-11-03 | 8.4d | 2021-10-20 | 2021-11-03 |  |  | 48h | 48h | 2,880 | 2,880 |
| 49 | 2.3.2.1.3.1 | Biblioteca esquemático |  | 1d | 2021-10-20 A | 2021-10-20 A | 43 | 100% | 2021-10-20 | 2021-10-20 | 1d | 2021-10-20 | 2021-10-20 |  | LEANDRO LEÃO | 8h | 8h | 480 | 480 |
| 50 | 2.3.2.1.3.2 | Cadastro de novos componentes |  | 2d | 2021-10-21 A | 2021-10-27 A | 49 | 100% | 2021-10-21 | 2021-10-27 | 2d | 2021-10-21 | 2021-10-27 |  | LEANDRO LEÃO | 16h | 16h | 960 | 960 |
| 51 | 2.3.2.1.3.3 | Esquemático cadeia de RF |  | 2d | 2021-10-28 A | 2021-11-03 A | 45, 46 | 100% | 2021-10-28 | 2021-11-03 | 2d | 2021-10-28 | 2021-11-03 |  | LEANDRO LEÃO | 16h | 16h | 960 | 960 |
| 52 | 2.3.2.1.3.4 | Orientar esquemático |  | 1d | 2021-10-26 A | 2021-10-26 A | 45 | 100% | 2021-10-26 | 2021-10-26 | 1d | 2021-10-26 | 2021-10-26 |  | ANDERSON ALVES | 8h | 8h | 480 | 480 |

| ID | WBS | Task | Type | Duration | Start | Finish | Predecessors | Complete | Baseline start | Baseline finish | Baseline duration | Baseline 1 start | Baseline 1 finish | Constraint | Resources | Work | Actual work | Cost | Actual cost |
| --- | --- | --- | --- | --- | --- | --- | --- | --- | --- | --- | --- | --- | --- | --- | --- | --- | --- | --- | --- |
| 53 | 2.3.2.1.4 | **Desenvolver Layout** |  | 5.8d | 2021-11-03 A | 2021-11-11 A |  | 100% | 2021-11-03 | 2021-11-11 | 5.8d | 2021-11-03 | 2021-11-11 |  |  | 46.4h | 46.4h | 2,784 | 2,784 |
| 54 | 2.3.2.1.4.1 | Biblioteca de footprint |  | 0.8d | 2021-11-03 A | 2021-11-04 A | 51 | 100% | 2021-11-03 | 2021-11-04 | 0.8d | 2021-11-03 | 2021-11-04 |  | LEANDRO LEÃO | 6.4h | 6.4h | 384 | 384 |
| 55 | 2.3.2.1.4.2 | Layout da cadeia de RF |  | 3d | 2021-11-04 A | 2021-11-09 A | 54 | 100% | 2021-11-04 | 2021-11-09 | 3d | 2021-11-04 | 2021-11-09 |  | LEANDRO LEÃO | 24h | 24h | 1,440 | 1,440 |
| 56 | 2.3.2.1.4.3 | Revisar layout |  | 1d | 2021-11-09 A | 2021-11-10 A | 55 | 100% | 2021-11-09 | 2021-11-10 | 1d | 2021-11-09 | 2021-11-10 |  | BARBARA SILVA | 8h | 8h | 480 | 480 |
| 57 | 2.3.2.1.4.4 | Finalizar layout |  | 1d | 2021-11-10 A | 2021-11-11 A | 56 | 100% | 2021-11-10 | 2021-11-11 | 1d | 2021-11-10 | 2021-11-11 |  | LEANDRO LEÃO | 8h | 8h | 480 | 480 |
| 58 | 2.3.2.1.5 | **Detalhar Projeto** |  | 1.5d | 2021-11-11 A | 2021-11-12 A |  | 100% | 2021-11-11 | 2021-11-12 | 1.5d | 2021-11-11 | 2021-11-12 |  |  |  |  |  |  |
| 59 | 2.3.2.1.5.1 | Lista de componentes |  | 0.5d | 2021-11-11 A | 2021-11-11 A | 57 | 100% | 2021-11-11 | 2021-11-11 | 0.5d | 2021-11-11 | 2021-11-11 |  |  |  |  |  |  |
| 60 | 2.3.2.1.5.2 | Desenho esquemático |  | 1d | 2021-11-11 A | 2021-11-12 A | 59 | 100% | 2021-11-11 | 2021-11-12 | 1d | 2021-11-11 | 2021-11-12 |  |  |  |  |  |  |
| 61 | 2.3.2.1.6 | **Fabricação e montagem de PCB** |  | 14d | 2021-12-20 A | 2022-01-06 A |  | 100% | 2021-11-12 | 2021-11-29 | 10d | 2021-12-20 | 2022-01-10 |  |  | 72h | 72h | 2,160 | 2,160 |
| 62 | 2.3.2.1.6.1 | Fabricação de PCB |  | 5d | 2021-12-20 A | 2021-12-24 A | 60 | 100% | 2021-11-12 | 2021-11-25 | 8d | 2021-12-20 | 2021-12-24 | finish no earlier than 2021-12-24 | Griffus | 40h | 40h | 1,200 | 1,200 |
| 63 | 2.3.2.1.6.2 | Montagem de componentes na PCB |  | 3d | 2022-01-03 A | 2022-01-05 A | 62, 46FS+15d | 100% | 2021-11-25 | 2021-11-26 | 1d | 2022-01-03 | 2022-01-07 | finish no earlier than 2022-01-07 | Produção | 24h | 24h | 480 | 480 |
| 64 | 2.3.2.1.6.3 | Realizar integração mecânica |  | 1d | 2022-01-06 A | 2022-01-06 A | 63 | 100% | 2021-11-26 | 2021-11-29 | 1d | 2022-01-10 | 2022-01-10 |  | TENÓRIO DE LIMA | 8h | 8h | 480 | 480 |
| 65 | 2.3.2.1.7 | Iniciar Testes | milestone | 0d | 2022-01-06 A | 2022-01-06 A | 64 | 100% | 2021-11-29 | 2021-11-29 | 0d | 2022-01-10 | 2022-01-10 |  |  |  |  |  |  |
| 66 | 2.3.2.1.8 | **Realizar testes** |  | 9d | 2022-01-12 A | 2022-01-24 A |  | 100% | 2021-11-29 | 2021-12-17 | 14d | 2022-01-11 | 2022-01-21 |  |  | 72h | 72h | 4,320 | 4,320 |
| 67 | 2.3.2.1.8.1 | Testar EXCDME s/ modulador |  | 1d | 2022-01-12 A | 2022-01-12 A | 64, 23 | 100% | 2021-11-29 | 2021-12-02 | 3d | 2022-01-11 | 2022-01-11 |  | ANDERSON ALVES | 8h | 8h | 480 | 480 |
| 68 | 2.3.2.1.8.2 | Testar EXCDME c/ modulador |  | 1d | 2022-01-13 A | 2022-01-13 A | 67 | 100% | 2021-12-02 | 2021-12-08 | 4d | 2022-01-12 | 2022-01-12 |  | ANDERSON ALVES | 8h | 8h | 480 | 480 |
| 69 | 2.3.2.1.8.3 | Realizar teste DME completo |  | 7d | 2022-01-14 A | 2022-01-24 A | 68 | 100% | 2021-12-08 | 2021-12-17 | 7d | 2022-01-13 | 2022-01-21 |  | ANDERSON ALVES | 56h | 56h | 3,360 | 3,360 |
| 70 | 2.3.3 | **Atualizar documentação de sistema** |  | 2d | 2022-01-25 A | 2022-01-26 A |  | 100% | 2021-12-17 | 2021-12-21 | 2d | 2022-01-24 | 2022-01-25 |  |  | 7.2h | 7.2h | 432 | 432 |
| 71 | 2.3.3.1 | Arquitetura do sistema (atualizado) |  | 1d | 2022-01-25 A | 2022-01-25 A | 69 | 100% | 2021-12-17 | 2021-12-20 | 1d | 2022-01-24 | 2022-01-24 |  | DOMINGOS GOMES [45%] | 3.6h | 3.6h | 216 | 216 |
| 72 | 2.3.3.2 | Interface do sistema (atualizado) |  | 1d | 2022-01-26 A | 2022-01-26 A | 71 | 100% | 2021-12-20 | 2021-12-21 | 1d | 2022-01-25 | 2022-01-25 |  | DOMINGOS GOMES [45%] | 3.6h | 3.6h | 216 | 216 |
| 73 | 2.4 | **V&V** |  | 1d | 2022-01-25 A | 2022-01-25 A |  | 100% | 2021-12-17 | 2021-12-21 | 2d | 2022-01-24 | 2022-01-25 |  |  | 8h | 8h | 480 | 480 |
| 74 | 2.4.1 | **Realizar Verificação & Validação do Sistema** |  | 1d | 2022-01-25 A | 2022-01-25 A |  | 100% | 2021-12-17 | 2021-12-21 | 2d | 2022-01-24 | 2022-01-25 |  |  | 8h | 8h | 480 | 480 |
| 75 | 2.4.1.1 | Procedimentos de Verificação com resultados |  | 1d | 2022-01-25 A | 2022-01-25 A | 69 | 100% | 2021-12-17 | 2021-12-21 | 2d | 2022-01-24 | 2022-01-25 |  | ANDERSON ALVES | 8h | 8h | 480 | 480 |
| 76 | 2.5 | **Transição** |  | 2d | 2022-01-25 A | 2022-01-26 A |  | 100% | 2021-12-17 | 2021-12-21 | 2d | 2022-01-24 | 2022-01-26 |  |  | 13.8h | 13.8h | 828 | 828 |
| 77 | 2.5.1 | Definir Documentação para Produção |  | 1d | 2022-01-25 A | 2022-01-25 A | 69 | 100% | 2021-12-17 | 2021-12-20 | 1d | 2022-01-24 | 2022-01-24 |  | BARBARA SILVA | 8h | 8h | 480 | 480 |
| 78 | 2.5.2 | Realizar baseline PRR |  | 0.5d | 2022-01-26 A | 2022-01-26 A | 77 | 100% | 2021-12-20 | 2021-12-21 | 0.5d | 2022-01-25 | 2022-01-25 |  | DOMINGOS GOMES [45%] | 1.8h | 1.8h | 108 | 108 |
| 79 | 2.5.3 | Auditar Baseline |  | 0.5d | 2022-01-26 A | 2022-01-26 A | 78, 16 | 100% | 2021-12-21 | 2021-12-21 | 0.5d | 2022-01-26 | 2022-01-26 | start no earlier than 2022-01-26 | MARIA DAS FLORES | 4h | 4h | 240 | 240 |

| ID | WBS | Task | Type | Duration | Start | Finish | Predecessors | Complete | Baseline start | Baseline finish | Baseline duration | Baseline 1 start | Baseline 1 finish | Constraint | Resources | Work | Actual work | Cost | Actual cost |
| --- | --- | --- | --- | --- | --- | --- | --- | --- | --- | --- | --- | --- | --- | --- | --- | --- | --- | --- | --- |
| 80 | 2.6 | **Monitoramento** |  | 70.05d | 2021-09-09 A | 2021-12-21 A |  | 100% | 2021-09-06 | 2021-12-23 | 75.05d | 2021-09-09 | 2021-12-21 |  |  | 24.32h | 24.32h | 1,459.2 | 1,459.2 |
| 81 | 2.6.1 | **Monitorar Projeto** |  | 70.05d | 2021-09-09 A | 2021-12-21 A |  | 100% | 2021-09-06 | 2021-12-23 | 75.05d | 2021-09-09 | 2021-12-21 |  |  | 14.72h | 14.72h | 883.2 | 883.2 |
| 82 | 2.6.1.1 | Atualização do Cronograma (quando oportuno) |  | 63d | 2021-09-09 A | 2021-12-21 A | 7 | 100% | 2021-09-13 | 2021-12-23 | 63d | 2021-09-09 | 2021-12-21 |  | DOMINGOS GOMES [2%] | 9.84h | 9.84h | 590.4 | 590.4 |
| 83 | 2.6.1.2 | Atualização do Plano de Gerenciamento do Projeto (quando oportuno). |  | 61d | 2021-09-16 A | 2021-12-14 A | 5 | 100% | 2021-09-06 | 2021-12-02 | 61d | 2021-09-16 | 2021-12-14 |  | DOMINGOS GOMES [1%] | 4.88h | 4.88h | 292.8 | 292.8 |
| 84 | 2.6.2 | **Monitorar Riscos** |  | 60d | 2021-09-13 A | 2021-12-08 A |  | 100% | 2021-09-08 | 2021-12-03 | 60d | 2021-09-13 | 2021-12-08 |  |  | 9.6h | 9.6h | 576 | 576 |
| 85 | 2.6.2.1 | Atualização da Matriz de Riscos |  | 60d | 2021-09-13 A | 2021-12-08 A | 6 | 100% | 2021-09-08 | 2021-12-03 | 60d | 2021-09-13 | 2021-12-08 |  | DOMINGOS GOMES [2%] | 9.6h | 9.6h | 576 | 576 |
| 86 | 2.7 | **Encerrar projeto** |  | 1.5d | 2022-01-27 A | 2022-01-28 A |  | 100% | 2021-12-21 | 2021-12-22 | 1.5d | 2022-01-27 | 2022-01-28 |  |  | 5.4h | 5.4h | 324 | 324 |
| 87 | 2.7.1 | Lições aprendidas |  | 1d | 2022-01-27 A | 2022-01-27 A | 78 | 100% | 2021-12-21 | 2021-12-22 | 1d | 2022-01-27 | 2022-01-27 | start no earlier than 2022-01-27 | DOMINGOS GOMES [45%] | 3.6h | 3.6h | 216 | 216 |
| 88 | 2.7.2 | Email de comunicação de encerramento do projeto |  | 0.5d | 2022-01-28 A | 2022-01-28 A | 87 | 100% | 2021-12-22 | 2021-12-22 | 0.5d | 2022-01-28 | 2022-01-28 | start no earlier than 2022-01-27 | DOMINGOS GOMES [45%] | 1.8h | 1.8h | 108 | 108 |
| 89 | 2.8 | Final do projeto | milestone | 0d | 2022-01-28 A | 2022-01-28 A | 88, 79 | 100% | 2021-12-22 | 2021-12-22 | 0d | 2022-01-28 | 2022-01-28 |  |  |  |  |  |  |
